Schedule from Planner, 2010-06-07 to 2010-07-21.

## Calendars

- Predeterminado: Mon-Fri 08:00-12:00, 13:00-17:00; Sat-Sun off. Exceptions (off unless hours are given): 2010-06-30 to 2010-07-02, 2010-07-05 to 2010-07-06.

## Resources

| Resource |
| --- |
| Eladio |

## Schedule

| ID | WBS | Task | Start | Finish | Predecessors | Resources | Work |
| --- | --- | --- | --- | --- | --- | --- | --- |
| 1 | 1 | **mygolfcard** | 2010-06-07 | 2010-07-21 |  |  | 260h |
| 2 | 1.1 | Planificación | 2010-06-07 | 2010-06-07 |  |  | 8h |
| 3 | 1.2 | **Modelo de Datos** | 2010-06-08 | 2010-06-09 | 2 |  | 36h |
| 4 | 1.2.1 | Log Histórico | 2010-06-08 | 2010-06-09 |  | Eladio | 12h |
| 5 | 1.2.2 | Perfiles - Permisos | 2010-06-08 | 2010-06-09 |  | Eladio | 12h |
| 6 | 1.2.3 | Privacidad | 2010-06-08 | 2010-06-09 |  | Eladio | 12h |
| 7 | 1.3 | **Alcance versión I** | 2010-06-09 | 2010-07-21 | 3 |  | 216h |
| 8 | 1.3.1 | Log operaciones | 2010-06-09 | 2010-06-10 |  |  | 8h |
| 9 | 1.3.2 | **Seguridad v.1.0** | 2010-06-10 | 2010-06-14 | 8 |  | 32h |
| 10 | 1.3.2.1 | Implementación Permisos | 2010-06-10 | 2010-06-14 |  |  | 16h |
| 11 | 1.3.2.2 | Implementación privacidad (público vs privado) | 2010-06-10 | 2010-06-14 |  |  | 16h |
| 12 | 1.3.3 | **Courses** | 2010-06-14 | 2010-06-18 | 9 |  | 32h |
| 13 | 1.3.3.1 | Alta sólo ADMIN | 2010-06-14 | 2010-06-15 |  |  | 8h |
| 14 | 1.3.3.2 | Galería de Imágenes | 2010-06-15 | 2010-06-16 | 13 |  | 8h |
| 15 | 1.3.3.3 | Geoposicionaminento fijo | 2010-06-16 | 2010-06-17 | 14 |  | 8h |
| 16 | 1.3.3.4 | Campos de Madrid | 2010-06-17 | 2010-06-18 | 15 |  | 8h |
| 17 | 1.3.4 | **Home** | 2010-06-18 | 2010-06-23 | 12 |  | 24h |
| 18 | 1.3.4.1 | Revisión de textos | 2010-06-18 | 2010-06-21 |  |  | 8h |
| 19 | 1.3.4.2 | Alta nuevos usuarios | 2010-06-21 | 2010-06-23 | 18 |  | 16h |
| 20 | 1.3.5 | **Inicio** | 2010-06-23 | 2010-06-28 | 17 |  | 24h |
| 21 | 1.3.5.1 | Estilos | 2010-06-23 | 2010-06-24 |  |  | 8h |
| 22 | 1.3.5.2 | Revisión textos de ayuda | 2010-06-24 | 2010-06-25 | 21 |  | 8h |
| 23 | 1.3.5.3 | Definir opciones finales | 2010-06-25 | 2010-06-28 | 22 |  | 8h |
| 24 | 1.3.6 | Menú | 2010-06-28 | 2010-06-29 | 20 |  | 8h |

| ID | WBS | Task | Start | Finish | Predecessors | Work |
| --- | --- | --- | --- | --- | --- | --- |
| 25 | 1.3.7 | **Matches** | 2010-06-29 | 2010-07-13 | 24 | 40h |
| 26 | 1.3.7.1 | Revisar estilos | 2010-06-29 | 2010-07-07 |  | 8h |
| 27 | 1.3.7.2 | Alta partidos | 2010-07-07 | 2010-07-09 | 26 | 16h |
| 28 | 1.3.7.3 | Privacidad en visualización | 2010-07-09 | 2010-07-13 | 27 | 16h |
| 29 | 1.3.8 | **Datos Personales** | 2010-07-13 | 2010-07-15 | 25 | 16h |
| 30 | 1.3.8.1 | Modificación Datos | 2010-07-13 | 2010-07-14 |  | 8h |
| 31 | 1.3.8.2 | Recuperación password | 2010-07-14 | 2010-07-15 | 30 | 8h |
| 32 | 1.3.9 | **Stats** | 2010-07-15 | 2010-07-21 | 29 | 32h |
| 33 | 1.3.9.1 | Definir 2-3 básicas | 2010-07-15 | 2010-07-20 |  | 24h |
| 34 | 1.3.9.2 | Estilos | 2010-07-20 | 2010-07-21 | 33 | 8h |
